# лр1

Schedule from MS Project, 2021-03-01 to 2021-09-22, costs in ₽.
Команда разработчиков из 16 человек занимается созданием карты города на основе собственного модуля отображения. Проект должен быть завершен в течение 6 месяцев. Бюджет проекта: 50 000 рублей

## Calendars

- Standard: Mon-Fri 08:00-12:00, 13:00-17:00; Sat-Sun off. Exceptions (off unless hours are given): 2021-03-08 (8 марта), 2021-05-01 to 2021-05-03 (1 мая), 2021-05-09 to 2021-05-10 (9 мая), 2021-06-12 to 2021-06-14 (12 июня).

## Resources

| Resource | Group | Rate | Cost per use |
| --- | --- | --- | --- |
| Ведущий программист | Программирование | 10 | 100 |
| Программист#1 | Программирование | 7 | 50 |
| Программист#2 | Программирование | 7 | 50 |
| Программист#3 | Программирование | 7 | 50 |
| Программист#4 | Программирование | 7 | 50 |
| Системный аналитик | Анализ | 20 | 300 |
| Художник-дизайнер | Дизайн | 8 | 70 |
| Технический писатель | Документация | 5 | 20 |
| Web-дизайнер | Inthernet | 7 | 50 |
| 3D аниматор | Дизайн | 8 | 70 |
| Мультимедиа-корреспондент | М-медиа | 3 | 20 |
| Наборщик данных#1 | Ввод данных | 2 | 10 |
| Наборщик данных#2 | Ввод данных | 2 | 10 |
| Наборщик данных#3 | Ввод данных | 2 | 10 |
| Наборщик данных#4 | Ввод данных | 2 | 10 |
| Наборщик данных#5 | Ввод данных | 2 | 10 |
| Сервер |  | 2 |  |

## Schedule

| ID | WBS | Task | Type | Duration | Start | Finish | Predecessors | Total slack | Free slack | Resources | Work | Cost |
| --- | --- | --- | --- | --- | --- | --- | --- | --- | --- | --- | --- | --- |
| 1 | 1 | **Начало проекта** |  | 143.38d | 2021-03-01 08:00 | 2021-09-22 11:00 |  | 0d |  |  | 9502h | 49,707 |
| 2 | 1.1 | **Создание интерфейса** |  | 112.25d | 2021-03-01 08:00 | 2021-08-10 10:00 |  | 0d |  |  | 560h | 5,550 |
| 3 | 1.1.1 | **Разработка дизайна интерфейса** |  | 25.62d | 2021-03-01 08:00 | 2021-04-06 14:00 |  | 71.62d | 0d |  | 320h | 2,770 |
| 4 | 1.1.1.1 | Разработка 2D графических элементов |  | 3w | 2021-03-01 08:00 | 2021-03-23 11:00 |  | 71.62d | 0d | Художник-дизайнер | 120h | 1,030 |
| 5 | 1.1.1.2 | Разработка 3D графических элементов |  | 2w | 2021-03-01 08:00 | 2021-03-16 10:00 | 4SS | 71.62d | 0d | 3D аниматор | 80h | 710 |
| 6 | 1.1.1.3 | Создание заставки |  | 3w | 2021-03-16 10:00 | 2021-04-06 14:00 | 5 | 71.62d |  | 3D аниматор | 120h | 1,030 |
| 7 | 1.1.2 | Программирование интерфейса |  | 3w | 2021-07-20 10:00 | 2021-08-10 10:00 | 3, 12 | 0d |  | Программист#3; Программист#4 | 240h | 1,780 |
| 8 | 1.2 | **Построение базы объектов** |  | 85.25d | 2021-03-23 11:00 | 2021-07-23 14:00 |  | 42.75d |  | Сервер | 5651h | 15,392 |
| 9 | 1.2.1 | Анализ и построение структуры базы объектов |  | 2w | 2021-03-23 11:00 | 2021-04-06 14:00 |  | 42.75d | 0d | Системный аналитик | 80h | 1,900 |
| 10 | 1.2.2 | Программирование средств обработки базы объектов |  | 3w | 2021-04-06 14:00 | 2021-04-27 14:00 | 9 | 42.75d | 0d | Программист#3; Программист#4 | 240h | 1,780 |
| 11 | 1.2.3 | Наполнение базы объектов |  | 12w | 2021-04-27 14:00 | 2021-07-23 14:00 | 10 | 42.75d |  | Наборщик данных#2; Наборщик данных#1; Наборщик данных#3; Наборщик данных#4; Наборщик данных#5 | 2400h | 4,850 |
| 12 | 1.3 | **Создание ядра GIS** |  | 97.25d | 2021-03-01 08:00 | 2021-07-20 10:00 |  | 0d |  |  | 1880h | 18,680 |
| 13 | 1.3.1 | Анализ и проектирование ядра |  | 3w | 2021-03-01 08:00 | 2021-03-23 11:00 |  | 0d |  | Ведущий программист; Системный аналитик | 240h | 4,000 |
| 14 | 1.3.2 | Создание модели ядра |  | 5.12w | 2021-03-23 11:00 | 2021-04-27 17:00 | 13 | 0d |  | Программист#1; Ведущий программист | 400h | 3,550 |
| 15 | 1.3.3 | Тестирование модели ядра |  | 1w | 2021-04-28 08:00 | 2021-05-05 17:00 | 14 | 0d |  | Программист#1 | 40h | 330 |
| 16 | 1.3.4 | Создание рабочей версии ядра |  | 10.25w | 2021-05-06 08:00 | 2021-07-20 10:00 | 15 | 0d |  | Ведущий программист; Программист#1; Программист#2 | 1200h | 9,800 |
| 17 | 1.4 | Создание мультимедиа – наполнения |  | 6w | 2021-04-06 14:00 | 2021-05-21 12:00 | 3 | 86.88d |  | Мультимедиа-корреспондент | 240h | 740 |
| 18 | 1.5 | Создание справочной системы |  | 2w | 2021-08-23 08:00 | 2021-09-06 10:00 | 7 | 12.12d |  | Технический писатель | 80h | 420 |
| 19 | 1.6 | **Создание руководства пользователя** |  | 17.38d | 2021-07-27 10:00 | 2021-08-19 14:00 | 7FS-10d | 0d |  |  | 160h | 1,010 |
| 20 | 1.6.1 | Разработка дизайна руководства |  | 1w | 2021-07-27 10:00 | 2021-08-03 11:00 |  | 0d |  | Художник-дизайнер | 40h | 390 |
| 21 | 1.6.2 | Написание руководства пользователя |  | 3w | 2021-07-29 10:00 | 2021-08-19 14:00 | 20SS+2d | 0d |  | Технический писатель | 120h | 620 |
| 22 | 1.7 | **Создание web – сайта и поддержка** |  | 23.62d | 2021-07-29 10:00 | 2021-08-31 16:00 |  | 0d |  |  | 248h | 2,106 |
| 23 | 1.7.1 | Разработка структуры сайта |  | 1d | 2021-07-29 10:00 | 2021-07-30 10:00 | 21SS | 0d |  | Web-дизайнер | 8h | 106 |
| 24 | 1.7.2 | Разработка дизайна сайта |  | 1.43w | 2021-07-30 10:00 | 2021-08-10 12:00 | 23 | 0d |  | Web-дизайнер; 3D аниматор; Художник-дизайнер | 120h | 1,110 |
| 25 | 1.7.3 | Наполнение сайта |  | 3w | 2021-08-10 13:00 | 2021-08-31 16:00 | 24 | 0d |  | Web-дизайнер | 120h | 890 |
| 26 | 1.8 | Тестирование сайта |  | 4.1w | 2021-08-24 16:00 | 2021-09-22 11:00 | 22FS-1w | 0d |  | Ведущий программист; Программист#1; Программист#2 | 480h | 4,040 |
| 27 | 1.9 | Сдача сайта в эксплуатацию | milestone | 0w | 2021-09-22 11:00 | 2021-09-22 11:00 | 26 | 0d |  |  |  |  |

| ID | WBS | Task | Type | Duration | Start | Finish | Total slack | Constraint | Resources | Work | Cost |
| --- | --- | --- | --- | --- | --- | --- | --- | --- | --- | --- | --- |
| 28 | 1.10 | **Совещание** |  | 136.12d | 2021-03-03 08:00 | 2021-09-15 09:00 | 0d |  |  | 203h | 1,769 |
| 29 | 1.10.1 | Совещание 1 | manual | 1h | 2021-03-03 08:00 | 2021-03-03 09:00 |  | start no earlier than 2021-03-03 08:00 | 3D аниматор; Web-дизайнер; Ведущий программист; Мультимедиа-корреспондент; Системный аналитик; Технический писатель; Художник-дизайнер | 7h | 61 |
| 30 | 1.10.2 | Совещание 2 | manual | 1h | 2021-03-10 08:00 | 2021-03-10 09:00 |  | start no earlier than 2021-03-10 08:00 | 3D аниматор; Web-дизайнер; Ведущий программист; Мультимедиа-корреспондент; Системный аналитик; Технический писатель; Художник-дизайнер | 7h | 61 |
| 31 | 1.10.3 | Совещание 3 | manual | 1h | 2021-03-17 08:00 | 2021-03-17 09:00 |  | start no earlier than 2021-03-17 08:00 | 3D аниматор; Web-дизайнер; Ведущий программист; Мультимедиа-корреспондент; Системный аналитик; Технический писатель; Художник-дизайнер | 7h | 61 |
| 32 | 1.10.4 | Совещание 4 | manual | 1h | 2021-03-24 08:00 | 2021-03-24 09:00 |  | start no earlier than 2021-03-24 08:00 | 3D аниматор; Web-дизайнер; Ведущий программист; Мультимедиа-корреспондент; Системный аналитик; Технический писатель; Художник-дизайнер | 7h | 61 |
| 33 | 1.10.5 | Совещание 5 | manual | 1h | 2021-03-31 08:00 | 2021-03-31 09:00 |  | start no earlier than 2021-03-31 08:00 | 3D аниматор; Web-дизайнер; Ведущий программист; Мультимедиа-корреспондент; Системный аналитик; Технический писатель; Художник-дизайнер | 7h | 61 |
| 34 | 1.10.6 | Совещание 6 | manual | 1h | 2021-04-07 08:00 | 2021-04-07 09:00 |  | start no earlier than 2021-04-07 08:00 | 3D аниматор; Web-дизайнер; Ведущий программист; Мультимедиа-корреспондент; Системный аналитик; Технический писатель; Художник-дизайнер | 7h | 61 |
| 35 | 1.10.7 | Совещание 7 | manual | 1h | 2021-04-14 08:00 | 2021-04-14 09:00 |  | start no earlier than 2021-04-14 08:00 | 3D аниматор; Web-дизайнер; Ведущий программист; Мультимедиа-корреспондент; Системный аналитик; Технический писатель; Художник-дизайнер | 7h | 61 |
| 36 | 1.10.8 | Совещание 8 | manual | 1h | 2021-04-21 08:00 | 2021-04-21 09:00 |  | start no earlier than 2021-04-21 08:00 | 3D аниматор; Web-дизайнер; Ведущий программист; Мультимедиа-корреспондент; Системный аналитик; Технический писатель; Художник-дизайнер | 7h | 61 |
| 37 | 1.10.9 | Совещание 9 | manual | 1h | 2021-04-28 08:00 | 2021-04-28 09:00 |  | start no earlier than 2021-04-28 08:00 | 3D аниматор; Web-дизайнер; Ведущий программист; Мультимедиа-корреспондент; Системный аналитик; Технический писатель; Художник-дизайнер | 7h | 61 |
| 38 | 1.10.10 | Совещание 10 | manual | 1h | 2021-05-05 08:00 | 2021-05-05 09:00 |  | start no earlier than 2021-05-05 08:00 | 3D аниматор; Web-дизайнер; Ведущий программист; Мультимедиа-корреспондент; Системный аналитик; Технический писатель; Художник-дизайнер | 7h | 61 |
| 39 | 1.10.11 | Совещание 11 | manual | 1h | 2021-05-12 08:00 | 2021-05-12 09:00 |  | start no earlier than 2021-05-12 08:00 | 3D аниматор; Web-дизайнер; Ведущий программист; Мультимедиа-корреспондент; Системный аналитик; Технический писатель; Художник-дизайнер | 7h | 61 |
| 40 | 1.10.12 | Совещание 12 | manual | 1h | 2021-05-19 08:00 | 2021-05-19 09:00 |  | start no earlier than 2021-05-19 08:00 | 3D аниматор; Web-дизайнер; Ведущий программист; Мультимедиа-корреспондент; Системный аналитик; Технический писатель; Художник-дизайнер | 7h | 61 |
| 41 | 1.10.13 | Совещание 13 | manual | 1h | 2021-05-26 08:00 | 2021-05-26 09:00 |  | start no earlier than 2021-05-26 08:00 | 3D аниматор; Web-дизайнер; Ведущий программист; Мультимедиа-корреспондент; Системный аналитик; Технический писатель; Художник-дизайнер | 7h | 61 |
| 42 | 1.10.14 | Совещание 14 | manual | 1h | 2021-06-02 08:00 | 2021-06-02 09:00 |  | start no earlier than 2021-06-02 08:00 | 3D аниматор; Web-дизайнер; Ведущий программист; Мультимедиа-корреспондент; Системный аналитик; Технический писатель; Художник-дизайнер | 7h | 61 |
| 43 | 1.10.15 | Совещание 15 | manual | 1h | 2021-06-09 08:00 | 2021-06-09 09:00 |  | start no earlier than 2021-06-09 08:00 | 3D аниматор; Web-дизайнер; Ведущий программист; Мультимедиа-корреспондент; Системный аналитик; Технический писатель; Художник-дизайнер | 7h | 61 |
| 44 | 1.10.16 | Совещание 16 | manual | 1h | 2021-06-16 08:00 | 2021-06-16 09:00 |  | start no earlier than 2021-06-16 08:00 | 3D аниматор; Web-дизайнер; Ведущий программист; Мультимедиа-корреспондент; Системный аналитик; Технический писатель; Художник-дизайнер | 7h | 61 |
| 45 | 1.10.17 | Совещание 17 | manual | 1h | 2021-06-23 08:00 | 2021-06-23 09:00 |  | start no earlier than 2021-06-23 08:00 | 3D аниматор; Web-дизайнер; Ведущий программист; Мультимедиа-корреспондент; Системный аналитик; Технический писатель; Художник-дизайнер | 7h | 61 |
| 46 | 1.10.18 | Совещание 18 | manual | 1h | 2021-06-30 08:00 | 2021-06-30 09:00 |  | start no earlier than 2021-06-30 08:00 | 3D аниматор; Web-дизайнер; Ведущий программист; Мультимедиа-корреспондент; Системный аналитик; Технический писатель; Художник-дизайнер | 7h | 61 |
| 47 | 1.10.19 | Совещание 19 | manual | 1h | 2021-07-07 08:00 | 2021-07-07 09:00 |  | start no earlier than 2021-07-07 08:00 | 3D аниматор; Web-дизайнер; Ведущий программист; Мультимедиа-корреспондент; Системный аналитик; Технический писатель; Художник-дизайнер | 7h | 61 |
| 48 | 1.10.20 | Совещание 20 | manual | 1h | 2021-07-14 08:00 | 2021-07-14 09:00 |  | start no earlier than 2021-07-14 08:00 | 3D аниматор; Web-дизайнер; Ведущий программист; Мультимедиа-корреспондент; Системный аналитик; Технический писатель; Художник-дизайнер | 7h | 61 |
| 49 | 1.10.21 | Совещание 21 | manual | 1h | 2021-07-21 08:00 | 2021-07-21 09:00 |  | start no earlier than 2021-07-21 08:00 | 3D аниматор; Web-дизайнер; Ведущий программист; Мультимедиа-корреспондент; Системный аналитик; Технический писатель; Художник-дизайнер | 7h | 61 |
| 50 | 1.10.22 | Совещание 22 | manual | 1h | 2021-07-28 08:00 | 2021-07-28 09:00 |  | start no earlier than 2021-07-28 08:00 | 3D аниматор; Web-дизайнер; Ведущий программист; Мультимедиа-корреспондент; Системный аналитик; Технический писатель; Художник-дизайнер | 7h | 61 |
| 51 | 1.10.23 | Совещание 23 | manual | 1h | 2021-08-04 08:00 | 2021-08-04 09:00 |  | start no earlier than 2021-08-04 08:00 | 3D аниматор; Web-дизайнер; Ведущий программист; Мультимедиа-корреспондент; Системный аналитик; Технический писатель; Художник-дизайнер | 7h | 61 |
| 52 | 1.10.24 | Совещание 24 | manual | 1h | 2021-08-11 08:00 | 2021-08-11 09:00 |  | start no earlier than 2021-08-11 08:00 | 3D аниматор; Web-дизайнер; Ведущий программист; Мультимедиа-корреспондент; Системный аналитик; Технический писатель; Художник-дизайнер | 7h | 61 |
| 53 | 1.10.25 | Совещание 25 | manual | 1h | 2021-08-18 08:00 | 2021-08-18 09:00 |  | start no earlier than 2021-08-18 08:00 | 3D аниматор; Web-дизайнер; Ведущий программист; Мультимедиа-корреспондент; Системный аналитик; Технический писатель; Художник-дизайнер | 7h | 61 |
| 54 | 1.10.26 | Совещание 26 | manual | 1h | 2021-08-25 08:00 | 2021-08-25 09:00 |  | start no earlier than 2021-08-25 08:00 | 3D аниматор; Web-дизайнер; Ведущий программист; Мультимедиа-корреспондент; Системный аналитик; Технический писатель; Художник-дизайнер | 7h | 61 |
| 55 | 1.10.27 | Совещание 27 | manual | 1h | 2021-09-01 08:00 | 2021-09-01 09:00 |  | start no earlier than 2021-09-01 08:00 | 3D аниматор; Web-дизайнер; Ведущий программист; Мультимедиа-корреспондент; Системный аналитик; Технический писатель; Художник-дизайнер | 7h | 61 |
| 56 | 1.10.28 | Совещание 28 | manual | 1h | 2021-09-08 08:00 | 2021-09-08 09:00 |  | start no earlier than 2021-09-08 08:00 | 3D аниматор; Web-дизайнер; Ведущий программист; Мультимедиа-корреспондент; Системный аналитик; Технический писатель; Художник-дизайнер | 7h | 61 |
| 57 | 1.10.29 | Совещание 29 | manual | 1h | 2021-09-15 08:00 | 2021-09-15 09:00 |  | start no earlier than 2021-09-15 08:00 | 3D аниматор; Web-дизайнер; Ведущий программист; Мультимедиа-корреспондент; Системный аналитик; Технический писатель; Художник-дизайнер | 7h | 61 |
