# лр3

Schedule from MS Project, 2021-03-01 to 2021-08-11, status date 2021-05-10, costs in ₽, A marks actual dates.
Команда разработчиков из 16 человек занимается созданием карты города на основе собственного модуля отображения. Проект должен быть завершен в течение 6 месяцев. Бюджет проекта: 50 000 рублей

## Calendars

- Standard: Mon-Fri 08:00-12:00, 13:00-17:00; Sat-Sun off. Exceptions (off unless hours are given): 2021-03-08 (8 марта), 2021-05-01 to 2021-05-03 (1 мая), 2021-05-09 to 2021-05-10 (9 мая), 2021-06-12 to 2021-06-14 (12 июня).

## Resources

| Resource | Group | Rate | Cost per use |
| --- | --- | --- | --- |
| Ведущий программист | Программирование | 10 | 100 |
| Программист#1 | Программирование | 7 | 50 |
| Программист#2 | Программирование | 7.7 | 50 |
| Программист#3 | Программирование | 7.7 | 50 |
| Программист#4 | Программирование | 7.7 | 50 |
| Системный аналитик | Анализ | 20 | 300 |
| Художник-дизайнер | Дизайн | 8 | 70 |
| Технический писатель | Документация | 5 | 20 |
| Web-дизайнер | Inthernet | 7 | 50 |
| 3D аниматор | Дизайн | 8 | 70 |
| Мультимедиа-корреспондент | М-медиа | 3 | 20 |
| Наборщик данных#1 | Ввод данных | 2 | 10 |
| Наборщик данных#2 | Ввод данных | 2 | 10 |
| Наборщик данных#3 | Ввод данных | 2 | 10 |
| Наборщик данных#4 | Ввод данных | 2 | 10 |
| Наборщик данных#5 | Ввод данных | 2 | 10 |
| Сервер |  | 2.1 |  |
| Спец. ПО |  |  | 1200 |
| Наборщик данных#6 |  | 2 | 10 |
| Наборщик данных#7 |  | 2 | 10 |

## Schedule

| ID | WBS | Task | Type | Duration | Start | Finish | Predecessors | Complete | Remaining | Baseline start | Baseline finish | Baseline duration | Total slack | Free slack | Resources | Work | Actual work | Cost | Baseline cost | Actual cost |
| --- | --- | --- | --- | --- | --- | --- | --- | --- | --- | --- | --- | --- | --- | --- | --- | --- | --- | --- | --- | --- |
| 1 | 1 | **Начало проекта** |  | 113.12d | 2021-03-01 08:00 A | 2021-08-11 09:00 |  | 34% | 74.72d | 2021-03-01 08:00 | 2021-07-27 08:48 | 102.1d | 0d |  |  | 6104.64h | 1571.55h | 42,149.49 | 48,622.27 | 18,892.27 |
| 2 | 1.1 | **Дизайн** |  | 30.16d | 2021-03-01 08:00 A | 2021-04-13 09:18 |  | 73% | 8.03d | 2021-03-01 08:00 | 2021-06-23 13:54 | 78.61d | 50.75d |  |  | 453h | 325h | 6,226 | 5,650 | 4,740 |
| 3 | 1.1.1 | **Разработка дизайна интерфейса** |  | 27.12d | 2021-03-01 08:00 A | 2021-04-08 09:00 A |  | 100% |  | 2021-03-01 08:00 | 2021-04-06 14:00 | 25.62d |  |  | Спец. ПО [200%] | 325h | 325h | 4,010 | 2,770 | 4,010 |
| 4 | 1.1.1.1 | Разработка 2D графических элементов |  | 3.3w | 2021-03-01 08:00 A | 2021-03-24 16:00 A |  | 100% |  | 2021-03-01 08:00 | 2021-03-23 11:00 | 3w |  |  | Художник-дизайнер | 131h | 131h | 1,118 | 1,030 | 1,118 |
| 5 | 1.1.1.2 | Разработка 3D графических элементов |  | 2.2w | 2021-03-01 08:00 A | 2021-03-17 10:00 A | 4SS | 100% |  | 2021-03-01 08:00 | 2021-03-16 10:00 | 2w |  |  | 3D аниматор | 81h | 81h | 718 | 710 | 718 |
| 6 | 1.1.1.3 | Создание заставки |  | 3.33w | 2021-03-16 10:00 A | 2021-04-08 09:00 A | 5 | 100% |  | 2021-03-16 10:00 | 2021-04-06 14:00 | 3w |  |  | 3D аниматор | 113h | 113h | 974 | 1,030 | 974 |
| 7 | 1.1.2 | Разработка структуры сайта |  | 1d | 2021-03-01 08:00 | 2021-03-01 17:00 |  |  |  | 2021-06-10 13:54 | 2021-06-11 13:54 | 1d | 50.75d | 0d | Web-дизайнер | 8h |  | 106 | 106 |  |
| 8 | 1.1.3 | Разработка дизайна сайта |  | 3w | 2021-03-02 08:00 | 2021-04-13 09:18 | 7 |  |  | 2021-06-11 13:54 | 2021-06-23 15:54 | 1.43w | 50.75d | 0d | Web-дизайнер; 3D аниматор; Художник-дизайнер | 120h |  | 1,110 | 1,110 |  |
| 9 | 1.2 | **Анализ** |  | 25.62d | 2021-03-01 08:00 A | 2021-04-06 14:00 |  | 74% | 6.63d | 2021-03-23 11:00 | 2021-07-23 14:00 | 85.25d | 13.5d |  |  | 312.31h | 242.31h | 6,113.6 | 15,392 | 5,713.6 |
| 10 | 1.2.1 | Анализ и построение структуры базы объектов |  | 3.23w | 2021-03-23 11:00 A | 2021-04-06 14:00 |  | 44% | 1.82w | 2021-03-23 11:00 | 2021-04-06 14:00 | 2w | 13.5d | 0d | Системный аналитик; Сервер | 140h | 70h | 1,840 | 1,900 | 1,700 |
| 11 | 1.2.2 | Анализ и проектирование ядра |  | 3.8w | 2021-03-01 08:00 A | 2021-03-26 17:00 A |  | 100% |  | 2021-03-01 08:00 | 2021-03-23 11:00 | 3w |  |  | Ведущий программист; Системный аналитик | 172.31h | 172.31h | 3,273.6 | 4,000 | 3,273.6 |
| 12 | 1.3 | **Программирование** |  | 62.69d | 2021-04-06 14:00 A | 2021-07-07 10:29 |  | 39% | 38.17d | 2021-06-10 13:54 | 2021-07-15 13:54 | 24d | 8.9d | 0d |  | 624h | 240h | 4,892 | 2,106 | 1,948 |
| 13 | 1.3.1 | Программирование интерфейса |  | 1.52w | 2021-06-25 14:29 | 2021-07-07 10:29 | 3, 17 |  |  | 2021-06-11 08:54 | 2021-06-23 13:54 | 1.5w | 6.51d | 0d | Программист#3; Программист#4; Программист#1; Программист#2 | 240h |  | 2,006 | 1,880 |  |
| 14 | 1.3.2 | Программирование средств обработки базы объектов |  | 3.4w | 2021-04-06 14:00 A | 2021-04-27 14:00 | 10 | 91% | 0.3w | 2021-04-06 14:00 | 2021-04-27 14:00 | 3w | 36.22d | 0d | Программист#3; Программист#4; Сервер | 264h | 240h | 1,996 | 1,780 | 1,948 |
| 15 | 1.3.3 | Наполнение сайта |  | 3w | 2021-04-13 09:18 | 2021-05-06 11:43 | 8 |  |  | 2021-06-23 15:54 | 2021-07-15 13:54 | 3w | 50.75d |  | Web-дизайнер | 120h |  | 890 | 890 |  |
| 16 | 1.4 | Наполнение базы объектов |  | 12.97w | 2021-04-27 14:00 | 2021-06-21 16:14 | 14 |  |  | 2021-04-27 14:00 | 2021-07-23 14:00 | 12w | 36.22d |  | Наборщик данных#2; Наборщик данных#1; Наборщик данных#3; Наборщик данных#4; Наборщик данных#5; Наборщик данных#6; Наборщик данных#7; Сервер | 1939h |  | 3,976.74 | 4,850 |  |
| 17 | 1.5 | **Создание ядра GIS** |  | 65.31d | 2021-03-23 11:00 A | 2021-06-25 14:29 |  | 48% | 33.94d | 2021-03-01 08:00 | 2021-06-11 08:54 | 71.11d | 6.51d | 0d |  | 1654.34h | 764.23h | 13,726 | 18,078.59 | 6,490.67 |
| 18 | 1.5.1 | Создание модели ядра |  | 2.03w | 2021-03-23 11:00 A | 2021-04-06 13:02 A | 11 | 100% |  | 2021-03-23 11:00 | 2021-04-06 13:02 | 2.03w |  |  | Программист#1; Ведущий программист; Программист#2; Программист#3; Программист#4 | 344.35h | 344.35h | 2,835.92 | 3,335.97 | 2,835.92 |
| 19 | 1.5.2 | Тестирование модели ядра |  | 1w | 2021-04-06 13:02 A | 2021-04-13 13:02 A | 18 | 100% |  | 2021-04-06 13:02 | 2021-04-13 13:02 | 1w |  |  | Программист#2; Программист#3; Программист#4 | 120h | 120h | 716 | 330 | 716 |
| 20 | 1.5.3 | Создание рабочей версии ядра |  | 10.04w | 2021-04-13 13:02 A | 2021-06-25 14:29 | 19 | 32% | 6.79w | 2021-04-13 13:02 | 2021-06-11 08:54 | 8.12w | 6.51d |  | Программист#1; Программист#2; Программист#3; Программист#4 | 1189.99h | 299.89h | 9,174.08 | 9,412.62 | 2,458.75 |
| 21 | 1.6 | Создание мультимедиа – наполнения |  | 6w | 2021-04-08 09:00 | 2021-05-25 15:00 | 3 |  |  | 2021-04-06 14:00 | 2021-05-21 12:00 | 6w | 54.38d |  | Мультимедиа-корреспондент | 240h |  | 740 | 740 |  |
| 22 | 1.7 | **Документация** |  | 28.3d | 2021-06-23 10:29 | 2021-08-02 13:54 |  |  |  |  |  |  | 6.51d |  |  | 240h |  | 1,429.96 |  |  |
| 23 | 1.7.1 | Создание справочной системы |  | 2w | 2021-07-19 10:54 | 2021-08-02 13:54 | 13 |  |  | 2021-07-05 10:54 | 2021-07-19 13:54 | 2w | 6.51d |  | Технический писатель | 80h |  | 420 | 420 |  |
| 24 | 1.7.2 | **Создание руководства пользователя** |  | 18.05d | 2021-06-23 10:29 | 2021-07-19 10:54 | 13FS-10d |  |  | 2021-06-08 13:54 | 2021-07-05 10:54 | 17.75d | 16.76d |  |  | 160h |  | 1,009.96 | 1,010 |  |
| 25 | 1.7.2.1 | Разработка дизайна руководства |  | 1.14w | 2021-06-23 10:29 | 2021-07-01 09:29 |  |  |  | 2021-06-08 13:54 | 2021-06-17 11:54 | 1w | 16.76d | 0d | Художник-дизайнер | 39.99h |  | 389.96 | 390 |  |
| 26 | 1.7.2.2 | Написание руководства пользователя |  | 3w | 2021-06-25 10:29 | 2021-07-19 10:54 | 25SS+2d |  |  | 2021-06-10 13:54 | 2021-07-05 10:54 | 3w | 16.76d |  | Технический писатель | 120h |  | 620 | 620 |  |
| 27 | 1.8 | Тестирование сайта |  | 3.21w | 2021-07-07 09:29 | 2021-07-29 09:45 | 12FS-1w |  |  | 2021-07-08 13:54 | 2021-07-27 08:48 | 2.5w | 8.9d | 0d | Программист#1; Программист#2; Программист#3; Программист#4 | 474h |  | 3,771.18 | 3,944.68 |  |
| 28 | 1.9 | Сдача сайта в эксплуатацию | milestone | 0w | 2021-07-29 09:45 | 2021-07-29 09:45 | 27 |  |  | 2021-07-27 08:48 | 2021-07-27 08:48 | 0w | 8.9d |  |  |  |  |  |  |  |

| ID | WBS | Task | Type | Duration | Start | Finish | Baseline start | Baseline finish | Baseline duration | Total slack | Constraint | Resources | Work | Cost | Baseline cost |
| --- | --- | --- | --- | --- | --- | --- | --- | --- | --- | --- | --- | --- | --- | --- | --- |
| 29 | 1.10 | **Совещание** |  | 111.12d | 2021-03-03 08:00 | 2021-08-11 09:00 | 2021-03-03 08:00 | 2021-07-21 09:00 | 96.12d | 0d |  |  | 168h | 1,274 | 1,281 |
| 30 | 1.10.1 | Совещание 1 | manual | 1h | 2021-03-03 08:00 | 2021-03-03 09:00 | 2021-03-03 08:00 | 2021-03-03 09:00 | 1h |  | start no earlier than 2021-03-03 08:00 | 3D аниматор; Web-дизайнер; Ведущий программист; Мультимедиа-корреспондент; Системный аналитик; Технический писатель; Художник-дизайнер | 7h | 61 | 61 |
| 31 | 1.10.2 | Совещание 2 | manual | 1h | 2021-03-10 08:00 | 2021-03-10 09:00 | 2021-03-10 08:00 | 2021-03-10 09:00 | 1h |  | start no earlier than 2021-03-10 08:00 | 3D аниматор; Web-дизайнер; Ведущий программист; Мультимедиа-корреспондент; Системный аналитик; Технический писатель; Художник-дизайнер | 7h | 61 | 61 |
| 32 | 1.10.3 | Совещание 3 | manual | 1h | 2021-03-17 08:00 | 2021-03-17 09:00 | 2021-03-17 08:00 | 2021-03-17 09:00 | 1h |  | start no earlier than 2021-03-17 08:00 | 3D аниматор; Web-дизайнер; Ведущий программист; Мультимедиа-корреспондент; Системный аналитик; Технический писатель; Художник-дизайнер | 7h | 61 | 61 |
| 33 | 1.10.4 | Совещание 4 | manual | 1h | 2021-03-24 08:00 | 2021-03-24 09:00 | 2021-03-24 08:00 | 2021-03-24 09:00 | 1h |  | start no earlier than 2021-03-24 08:00 | 3D аниматор; Web-дизайнер; Ведущий программист; Мультимедиа-корреспондент; Системный аналитик; Технический писатель; Художник-дизайнер | 7h | 61 | 61 |
| 34 | 1.10.5 | Совещание 5 | manual | 1h | 2021-03-31 08:00 | 2021-03-31 09:00 | 2021-03-31 08:00 | 2021-03-31 09:00 | 1h |  | start no earlier than 2021-03-31 08:00 | 3D аниматор; Web-дизайнер; Ведущий программист; Мультимедиа-корреспондент; Системный аналитик; Технический писатель; Художник-дизайнер | 7h | 61 | 61 |
| 35 | 1.10.6 | Совещание 6 | manual | 1h | 2021-04-07 08:00 | 2021-04-07 09:00 | 2021-04-07 08:00 | 2021-04-07 09:00 | 1h |  | start no earlier than 2021-04-07 08:00 | 3D аниматор; Web-дизайнер; Мультимедиа-корреспондент; Системный аналитик; Технический писатель; Художник-дизайнер; Программист#1 | 7h | 51 | 61 |
| 36 | 1.10.7 | Совещание 7 | manual | 1h | 2021-04-14 08:00 | 2021-04-14 09:00 | 2021-04-14 08:00 | 2021-04-14 09:00 | 1h |  | start no earlier than 2021-04-14 08:00 | 3D аниматор; Web-дизайнер; Мультимедиа-корреспондент; Системный аналитик; Технический писатель; Художник-дизайнер; Программист#1 | 7h | 51 | 61 |
| 37 | 1.10.8 | Совещание 8 | manual | 1h | 2021-04-21 08:00 | 2021-04-21 09:00 | 2021-04-21 08:00 | 2021-04-21 09:00 | 1h |  | start no earlier than 2021-04-21 08:00 | 3D аниматор; Web-дизайнер; Мультимедиа-корреспондент; Системный аналитик; Технический писатель; Художник-дизайнер; Программист#1 | 7h | 51 | 61 |
| 38 | 1.10.9 | Совещание 9 | manual | 1h | 2021-04-28 08:00 | 2021-04-28 09:00 | 2021-04-28 08:00 | 2021-04-28 09:00 | 1h |  | start no earlier than 2021-04-28 08:00 | 3D аниматор; Web-дизайнер; Мультимедиа-корреспондент; Системный аналитик; Технический писатель; Художник-дизайнер; Программист#1 | 7h | 51 | 61 |
| 39 | 1.10.10 | Совещание 10 | manual | 1h | 2021-05-05 08:00 | 2021-05-05 09:00 | 2021-05-05 08:00 | 2021-05-05 09:00 | 1h |  | start no earlier than 2021-05-05 08:00 | 3D аниматор; Web-дизайнер; Мультимедиа-корреспондент; Системный аналитик; Технический писатель; Художник-дизайнер; Программист#1 | 7h | 51 | 61 |
| 40 | 1.10.11 | Совещание 11 | manual | 1h | 2021-05-12 08:00 | 2021-05-12 09:00 | 2021-05-12 08:00 | 2021-05-12 09:00 | 1h |  | start no earlier than 2021-05-12 08:00 | 3D аниматор; Web-дизайнер; Мультимедиа-корреспондент; Системный аналитик; Технический писатель; Художник-дизайнер; Программист#1 | 7h | 51 | 61 |
| 41 | 1.10.12 | Совещание 12 | manual | 1h | 2021-05-19 08:00 | 2021-05-19 09:00 | 2021-05-19 08:00 | 2021-05-19 09:00 | 1h |  | start no earlier than 2021-05-19 08:00 | 3D аниматор; Web-дизайнер; Мультимедиа-корреспондент; Системный аналитик; Технический писатель; Художник-дизайнер; Программист#1 | 7h | 51 | 61 |
| 42 | 1.10.13 | Совещание 13 | manual | 1h | 2021-05-26 08:00 | 2021-05-26 09:00 | 2021-05-26 08:00 | 2021-05-26 09:00 | 1h |  | start no earlier than 2021-05-26 08:00 | 3D аниматор; Web-дизайнер; Мультимедиа-корреспондент; Системный аналитик; Технический писатель; Художник-дизайнер; Программист#1 | 7h | 51 | 61 |
| 43 | 1.10.14 | Совещание 14 | manual | 1h | 2021-06-02 08:00 | 2021-06-02 09:00 | 2021-06-02 08:00 | 2021-06-02 09:00 | 1h |  | start no earlier than 2021-06-02 08:00 | 3D аниматор; Web-дизайнер; Мультимедиа-корреспондент; Системный аналитик; Технический писатель; Художник-дизайнер; Программист#1 | 7h | 51 | 61 |
| 44 | 1.10.15 | Совещание 15 | manual | 1h | 2021-06-09 08:00 | 2021-06-09 09:00 | 2021-06-09 08:00 | 2021-06-09 09:00 | 1h |  | start no earlier than 2021-06-09 08:00 | 3D аниматор; Web-дизайнер; Мультимедиа-корреспондент; Системный аналитик; Технический писатель; Художник-дизайнер; Программист#1 | 7h | 51 | 61 |
| 45 | 1.10.16 | Совещание 16 | manual | 1h | 2021-06-16 08:00 | 2021-06-16 09:00 | 2021-06-16 08:00 | 2021-06-16 09:00 | 1h |  | start no earlier than 2021-06-16 08:00 | 3D аниматор; Web-дизайнер; Мультимедиа-корреспондент; Системный аналитик; Технический писатель; Художник-дизайнер; Программист#1 | 7h | 51 | 61 |
| 46 | 1.10.17 | Совещание 17 | manual | 1h | 2021-06-23 08:00 | 2021-06-23 09:00 | 2021-06-23 08:00 | 2021-06-23 09:00 | 1h |  | start no earlier than 2021-06-23 08:00 | 3D аниматор; Web-дизайнер; Мультимедиа-корреспондент; Системный аналитик; Технический писатель; Художник-дизайнер; Программист#1 | 7h | 51 | 61 |
| 47 | 1.10.18 | Совещание 18 | manual | 1h | 2021-06-30 08:00 | 2021-06-30 09:00 | 2021-06-30 08:00 | 2021-06-30 09:00 | 1h |  | start no earlier than 2021-06-30 08:00 | 3D аниматор; Web-дизайнер; Мультимедиа-корреспондент; Системный аналитик; Технический писатель; Художник-дизайнер; Программист#1 | 7h | 51 | 61 |
| 48 | 1.10.19 | Совещание 19 | manual | 1h | 2021-07-07 08:00 | 2021-07-07 09:00 | 2021-07-07 08:00 | 2021-07-07 09:00 | 1h |  | start no earlier than 2021-07-07 08:00 | 3D аниматор; Web-дизайнер; Мультимедиа-корреспондент; Системный аналитик; Технический писатель; Художник-дизайнер; Программист#1 | 7h | 51 | 61 |
| 49 | 1.10.20 | Совещание 20 | manual | 1h | 2021-07-14 08:00 | 2021-07-14 09:00 | 2021-07-14 08:00 | 2021-07-14 09:00 | 1h |  | start no earlier than 2021-07-14 08:00 | 3D аниматор; Web-дизайнер; Мультимедиа-корреспондент; Системный аналитик; Технический писатель; Художник-дизайнер; Программист#1 | 7h | 51 | 61 |
| 50 | 1.10.21 | Совещание 21 | manual | 1h | 2021-07-21 08:00 | 2021-07-21 09:00 | 2021-07-21 08:00 | 2021-07-21 09:00 | 1h |  | start no earlier than 2021-07-21 08:00 | 3D аниматор; Web-дизайнер; Мультимедиа-корреспондент; Системный аналитик; Технический писатель; Художник-дизайнер; Программист#1 | 7h | 51 | 61 |
| 51 | 1.10.22 | Совещание 22 | manual | 1h | 2021-07-28 08:00 | 2021-07-28 09:00 |  |  |  |  | start no earlier than 2021-07-28 08:00 | 3D аниматор; Web-дизайнер; Мультимедиа-корреспондент; Системный аналитик; Технический писатель; Художник-дизайнер; Программист#1 | 7h | 51 |  |
| 52 | 1.10.23 | Совещание 23 | manual | 1h | 2021-08-04 08:00 | 2021-08-04 09:00 |  |  |  |  | start no earlier than 2021-08-04 08:00 | 3D аниматор; Web-дизайнер; Мультимедиа-корреспондент; Системный аналитик; Технический писатель; Художник-дизайнер; Программист#1 | 7h | 51 |  |
| 53 | 1.10.24 | Совещание 24 | manual | 1h | 2021-08-11 08:00 | 2021-08-11 09:00 |  |  |  |  | start no earlier than 2021-08-11 08:00 | 3D аниматор; Web-дизайнер; Мультимедиа-корреспондент; Системный аналитик; Технический писатель; Художник-дизайнер; Программист#1 | 7h | 51 |  |
