# РК_Белоусова

Schedule from MS Project, 2021-04-05 to 2021-06-30, status date 2021-05-14, costs in ₽.

## Calendars

- Standard: Mon-Sun 09:00-13:00, 14:00-18:00. Exceptions (off unless hours are given): 2021-05-01 to 2021-05-03 (1 мая), 2021-05-09 to 2021-05-10 (9 мая), 2021-06-12 to 2021-06-14 (12 июня).

## Resources

| Resource | Group | Unit | Rate | Cost per use |
| --- | --- | --- | --- | --- |
| Аналитик |  |  | 500 | 5000 |
| Ведущий программист | Программисты |  | 371.88 | 3000 |
| Программист 1 | Программисты |  | 312.5 | 2000 |
| Программист 2 | Программисты |  | 312.5 | 2000 |
| Программист 3 | Программисты |  | 312.5 | 2000 |
| Технический писатель |  |  | 250 | 1500 |
| Наборщики данных | Технический персонал |  | 218.75 | 1000 |
| Сервер базы данных | Оборудование |  | 25000 | 10000 |
| Картиджы для принтера | Расходные материалы | шт | 2500 |  |
| Бумага | Расходные материалы | пач | 200 |  |
| Специалист для профилактики |  |  | 3000 |  |
| Технический писатель 2 |  |  | 250 | 1500 |

## Schedule

| ID | WBS | Task | Type | Duration | Start | Finish | Predecessors | Baseline start | Baseline finish | Baseline duration | Total slack | Free slack | Constraint | Resources | Work | Cost | Baseline cost |
| --- | --- | --- | --- | --- | --- | --- | --- | --- | --- | --- | --- | --- | --- | --- | --- | --- | --- |
| 1 | 1 | Начало реализации проекта | milestone | 0d | 2021-04-05 | 2021-04-05 |  | 2021-04-05 | 2021-04-05 | 0d | 0d |  |  |  |  |  |  |
| 2 | 2 | **Программирование** |  | 48d | 2021-04-06 | 2021-05-28 |  | 2021-04-06 | 2021-05-28 | 48d | 0d |  |  | Сервер базы данных | 936h | 384,125 | 392,000 |
| 3 | 2.1 | Постановка задачи |  | 5d | 2021-04-06 | 2021-04-10 | 1FS+1d | 2021-04-06 | 2021-04-10 | 5d | 0d |  |  | Аналитик; Ведущий программист | 80h | 42,875 | 45,500 |
| 4 | 2.2 | Разработка интерфейса |  | 10d | 2021-04-11 | 2021-04-20 | 3 | 2021-04-11 | 2021-04-20 | 10d | 0d |  |  | Ведущий программист; Программист 1 | 160h | 59,750 | 65,000 |
| 5 | 2.3 | Разработка модулей обработки данных |  | 16d | 2021-05-12 | 2021-05-28 | 4 | 2021-05-12 | 2021-05-28 | 16d | 0d |  |  | Программист 2; Программист 3 | 240h | 79,000 | 79,000 |
| 6 | 2.4 | Разработка базы данных |  | 15d | 2021-04-21 | 2021-05-12 | 3 | 2021-04-21 | 2021-05-12 | 15d | 4d | 0d |  | Аналитик; Программист 1; Программист 2 | 360h | 144,000 | 144,000 |
| 7 | 2.5 | Заполнение базы данных |  | 12d | 2021-05-13 | 2021-05-24 | 6 | 2021-05-13 | 2021-05-24 | 12d | 4d |  |  | Наборщики данных | 96h | 22,000 | 22,000 |
| 8 | 3 | Программирование завершено | milestone | 0d | 2021-05-28 | 2021-05-28 | 5, 7 | 2021-05-28 | 2021-05-28 | 0d | 0d |  |  |  |  |  |  |
| 9 | 4 | **Тестирование и отладка** |  | 29.4d | 2021-05-29 | 2021-06-30 |  | 2021-05-29 | 2021-06-21 | 21d | 0d |  |  |  | 320h | 117,125 | 125,000 |
| 10 | 4.1 | Подготовка тестовых наборов данных |  | 5d | 2021-05-29 | 2021-06-02 | 8FS-5d | 2021-05-29 | 2021-06-02 | 5d | 0d |  |  | Программист 1; Программист 3 | 80h | 29,000 | 29,000 |
| 11 | 4.2 | Тестирование и исправление ошибок |  | 20.19d | 2021-06-03 | 2021-06-30 | 10 | 2021-06-03 | 2021-06-21 | 15d | 0d |  |  | Ведущий программист; Программист 2 | 240h | 87,125 | 95,000 |
| 12 | 5 | Отладка завершена | milestone | 0d | 2021-06-30 | 2021-06-30 | 11 | 2021-06-21 | 2021-06-21 | 0d | 0d |  |  |  |  |  |  |
| 13 | 6 | **Разработка документации** |  | 14.5d | 2021-06-09 | 2021-06-26 |  | 2021-06-09 | 2021-06-26 | 14.5d | 3.9d |  |  | Картиджы для принтера [0.01 шт]; Бумага [0.01 пач] | 200h | 60,720 | 59,770 |
| 14 | 6.1 | Составление программной документации |  | 5d | 2021-06-09 | 2021-06-16 | 8SS+10d | 2021-06-09 | 2021-06-16 | 5d | 3.9d | 0d |  | Технический писатель; Технический писатель 2 | 80h | 23,200 | 23,000 |
| 15 | 6.2 | Составление пользовательской документации |  | 7.5d | 2021-06-18 | 2021-06-26 | 14 | 2021-06-18 | 2021-06-26 | 7.5d | 3.9d | 0d |  | Технический писатель; Технический писатель 2 | 120h | 33,750 | 33,000 |
| 16 | 7 | Конец проекта | milestone | 0d | 2021-06-26 | 2021-06-26 | 15 | 2021-06-26 | 2021-06-26 | 0d | 3.9d |  |  |  |  |  |  |
| 17 | 8 | **Профилактика оборудования** |  | 49d | 2021-04-27 | 2021-06-22 |  | 2021-04-27 | 2021-06-22 | 49d | 7.4d |  |  |  | 300h | 15,000 | 15,000 |
| 18 | 8.1 | Профилактика оборудования 1 |  | 8h | 2021-04-27 | 2021-04-27 |  | 2021-04-27 | 2021-04-27 | 8h | 55.4d |  | start no earlier than 2021-04-27 | Специалист для профилактики; Аналитик; Ведущий программист; Наборщики данных; Программист 1; Программист 2; Программист 3; Технический писатель; Картиджы для принтера [1 шт]; Технический писатель 2 | 64h | 3,000 | 3,000 |
| 19 | 8.2 | Профилактика оборудования 2 |  | 8h | 2021-05-11 | 2021-05-11 |  | 2021-05-11 | 2021-05-11 | 8h | 46.4d |  | start no earlier than 2021-05-11 | Специалист для профилактики; Аналитик; Ведущий программист; Наборщики данных; Программист 1; Программист 2; Программист 3; Технический писатель; Картиджы для принтера [1 шт]; Технический писатель 2 | 59h | 3,000 | 3,000 |
| 20 | 8.3 | Профилактика оборудования 3 |  | 8h | 2021-05-25 | 2021-05-25 |  | 2021-05-25 | 2021-05-25 | 8h | 32.4d |  | start no earlier than 2021-05-25 | Специалист для профилактики; Аналитик; Ведущий программист; Наборщики данных; Программист 1; Программист 2; Программист 3; Технический писатель; Картиджы для принтера [1 шт]; Технический писатель 2 | 59h | 3,000 | 3,000 |
| 21 | 8.4 | Профилактика оборудования 4 |  | 8h | 2021-06-08 | 2021-06-08 |  | 2021-06-08 | 2021-06-08 | 8h | 18.4d |  | start no earlier than 2021-06-08 | Специалист для профилактики; Аналитик; Ведущий программист; Наборщики данных; Программист 1; Программист 2; Программист 3; Технический писатель; Картиджы для принтера [1 шт]; Технический писатель 2 | 59h | 3,000 | 3,000 |
| 22 | 8.5 | Профилактика оборудования 5 |  | 8h | 2021-06-22 | 2021-06-22 |  | 2021-06-22 | 2021-06-22 | 8h | 7.4d |  | start no earlier than 2021-06-22 | Специалист для профилактики; Аналитик; Ведущий программист; Наборщики данных; Программист 1; Программист 2; Программист 3; Технический писатель; Картиджы для принтера [1 шт]; Технический писатель 2 | 59h | 3,000 | 3,000 |
